# myReceita - Project

Schedule from MS Project, 2021-04-01 to 2021-07-15, A marks actual dates.

## Calendars

- Standard: Mon-Fri 08:00-12:00, 13:00-17:00; Sat-Sun off.

## Resources

| Resource |
| --- |
| João Silva |
| Bernardo Calado |
| Mariana Dias |
| Luís Silvério |
| Mário Marques da Silva |
| Lui |
| Jo~~ao |

## Schedule

| ID | WBS | Task | Type | Duration | Start | Finish | Predecessors | Complete | Remaining | Total slack | Free slack | Constraint | Resources | Work | Actual work |
| --- | --- | --- | --- | --- | --- | --- | --- | --- | --- | --- | --- | --- | --- | --- | --- |
| 1 | 1 | **myReceita** |  | 75.62d? | 2021-04-01 A | 2021-07-15 |  | 7% | 70.2d? | 0d |  |  |  | 1438h | 64h |
| 2 | 1.1 | **Candidatura** |  | 7d | 2021-04-01 A | 2021-04-09 |  | 89% | 0.78d | 67.62d |  |  |  | 96h | 64h |
| 3 | 1.1.1 | Preparação de Candidatura |  | 1d | 2021-04-01 | 2021-04-01 |  |  |  | 73.62d |  |  | João Silva; Luís Silvério; Bernardo Calado; Mariana Dias | 32h |  |
| 4 | 1.1.2 | Entrega de documentação | milestone | 3d | 2021-04-02 A | 2021-04-06 A | 3 | 100% |  |  |  | finish no later than 2021-04-09 | João Silva; Luís Silvério; Bernardo Calado; Mariana Dias | 24h | 24h |
| 5 | 1.1.3 | Aprovação de Projeto |  | 5d | 2021-04-05 A | 2021-04-09 A | 4 | 100% |  |  |  | finish no later than 2021-04-16 | Mário Marques da Silva | 40h | 40h |
| 6 | 1.2 | **Project** |  | 4.62d | 2021-04-12 | 2021-04-16 |  |  |  | 0d |  |  |  | 148h |  |
| 7 | 1.2.1 | Levantamento de requisitos |  | 2d | 2021-04-12 | 2021-04-13 | 5 |  |  | 0d |  |  | Luís Silvério; João Silva; Bernardo Calado; Mariana Dias | 64h |  |
| 8 | 1.2.2 | Analise de Tarefas |  | 1d | 2021-04-14 | 2021-04-14 | 7 |  |  | 0d |  |  | Luís Silvério; João Silva; Bernardo Calado; Mariana Dias | 32h |  |
| 9 | 1.2.3 | Planeamento |  | 1d | 2021-04-15 | 2021-04-15 | 8 |  |  | 0d |  |  | Luís Silvério; João Silva; Bernardo Calado; Mariana Dias | 32h |  |
| 10 | 1.2.4 | Elaboração de project |  | 4h | 2021-04-16 | 2021-04-16 | 9 |  |  | 0d |  |  | Luís Silvério; João Silva; Bernardo Calado; Mariana Dias | 16h |  |
| 11 | 1.2.5 | Entrega de project | milestone | 1h | 2021-04-16 | 2021-04-16 | 10 |  |  | 0d |  | finish no later than 2021-04-19 | Luís Silvério; João Silva; Bernardo Calado; Mariana Dias | 4h |  |
| 12 | 1.3 | **Desenvolvimento** |  | 56.25d | 2021-04-16 | 2021-07-05 |  |  |  | 0d |  |  |  | 1104h |  |
| 13 | 1.3.1 | **Prototipagem** |  | 10.25d | 2021-04-16 | 2021-04-30 |  |  |  | 0d |  |  |  | 88h |  |
| 14 | 1.3.1.1 | Aplicação |  | 5d | 2021-04-16 | 2021-04-23 | 11 |  |  | 5d |  |  | Luís Silvério | 40h |  |
| 15 | 1.3.1.2 | Website |  | 5d | 2021-04-23 | 2021-04-30 | 11 |  |  | 0d |  |  | Luís Silvério | 40h |  |
| 16 | 1.3.1.3 | Selecção e plataformas e software |  | 2h | 2021-04-30 | 2021-04-30 | 14, 15 |  |  | 0d |  | finish no later than 2021-04-30 | Luís Silvério; João Silva; Bernardo Calado; Mariana Dias | 8h |  |
| 17 | 1.3.2 | **Base de dados** |  | 8d | 2021-05-04 | 2021-05-14 |  |  |  | 27d |  |  |  | 184h |  |
| 18 | 1.3.2.1 | Recolha de requisitos |  | 1d | 2021-05-04 | 2021-05-05 | 13 |  |  | 27d | 0d |  | Luís Silvério; João Silva; Bernardo Calado; Mariana Dias | 32h |  |
| 19 | 1.3.2.2 | Elaboração de diagramas |  | 3d | 2021-05-05 | 2021-05-10 | 18 |  |  | 27d | 0d |  | Luís Silvério; João Silva; Bernardo Calado; Mariana Dias | 96h |  |
| 20 | 1.3.2.3 | Planeamento de implementação |  | 1d | 2021-05-10 | 2021-05-11 | 19 |  |  | 27d | 0d |  | Luís Silvério; João Silva; Bernardo Calado; Mariana Dias | 32h |  |
| 21 | 1.3.2.4 | Construção |  | 3d | 2021-05-11 | 2021-05-14 | 20 |  |  | 27d |  |  | Bernardo Calado | 24h |  |
| 22 | 1.3.3 | **Aplicação** |  | 37d | 2021-04-30 | 2021-06-22 |  |  |  | 0d |  |  |  | 272h |  |
| 23 | 1.3.3.1 | Analise de prototipo |  | 1d | 2021-04-30 | 2021-05-03 | 13 |  |  | 0d |  |  | João Silva; Luís Silvério; Bernardo Calado; Mariana Dias | 32h |  |
| 24 | 1.3.3.2 | Construção |  | 30d | 2021-05-11 | 2021-06-22 | 23 |  |  | 0d |  |  | João Silva | 240h |  |

| ID | WBS | Task | Duration | Start | Finish | Predecessors | Total slack | Constraint | Resources | Work |
| --- | --- | --- | --- | --- | --- | --- | --- | --- | --- | --- |
| 25 | 1.3.4 | **Website** | 36d | 2021-05-03 | 2021-06-22 |  | 0d |  |  | 272h |
| 26 | 1.3.4.1 | Analise de prototipo | 1d | 2021-05-03 | 2021-05-04 | 13 | 0d |  | Luís Silvério; João Silva; Bernardo Calado; Mariana Dias | 32h |
| 27 | 1.3.4.2 | Construção | 30d | 2021-05-11 | 2021-06-22 | 26 | 0d |  | Luís Silvério | 240h |
| 28 | 1.3.5 | **Testes** | 9d | 2021-06-22 | 2021-07-05 |  | 0d |  |  | 288h |
| 29 | 1.3.5.1 | 1ª fase | 2d | 2021-06-22 | 2021-06-24 | 17, 22, 25 | 0d |  | Luís Silvério; João Silva; Bernardo Calado; Mariana Dias | 64h |
| 30 | 1.3.5.2 | Patching | 5d | 2021-06-24 | 2021-07-01 | 29 | 0d |  | Luís Silvério; João Silva; Bernardo Calado; Mariana Dias | 160h |
| 31 | 1.3.5.3 | 2ª fase | 2d | 2021-07-01 | 2021-07-05 | 30 | 0d |  | Luís Silvério; João Silva; Bernardo Calado; Mariana Dias | 64h |
| 32 | 1.4 | **Relatório** | 6.75d | 2021-07-05 | 2021-07-14 |  | 0d |  |  | 90h |
| 33 | 1.4.1 | Analise de modelo | 2h | 2021-07-05 | 2021-07-06 | 13, 17, 22, 25, 28 | 0d |  | Luís Silvério; João Silva; Bernardo Calado; Mariana Dias | 8h |
| 34 | 1.4.2 | Planeamento | 2h | 2021-07-06 | 2021-07-06 | 33 | 0d |  | Luís Silvério; João Silva; Bernardo Calado; Mariana Dias | 8h |
| 35 | 1.4.3 | Elaboração | 5d | 2021-07-06 | 2021-07-13 | 34 | 0d |  | Mariana Dias | 40h |
| 36 | 1.4.4 | 1ª leitura | 4h | 2021-07-13 | 2021-07-13 | 35 | 0d |  | Luís Silvério; João Silva; Bernardo Calado; Mariana Dias | 16h |
| 37 | 1.4.5 | Correções | 2h | 2021-07-13 | 2021-07-14 | 36 | 0d |  | Mariana Dias | 2h |
| 38 | 1.4.6 | 2ª leitura | 4h | 2021-07-14 | 2021-07-14 | 37 | 0d |  | Luís Silvério; João Silva; Bernardo Calado; Mariana Dias | 16h |
| 39 | 1.5 | Entrega | 1d | 2021-07-14 | 2021-07-15 | 2, 6, 12, 17, 22, 25, 28, 32 | 0d | finish no later than 2021-07-15 |  |  |
